Schedule from GanttProject, 2012-03-23 to 2013-11-12.
Holidays every year on 01-01, 01-06, 04-25, 05-01, 06-02, 08-15, 11-01, 12-08, 12-25, 12-26

## Calendars

- Project calendar: Mon-Sun working.

## Resources

| Resource |
| --- |
| APA |

## Schedule

| ID | WBS | Task | Type | Duration | Start | Finish | Predecessors |
| --- | --- | --- | --- | --- | --- | --- | --- |
| 1 | 1 | **3. Fase 1** |  | 61d | 2012-03-23 | 2012-05-24 |  |
| 2 | 1.1 | 3.01 Pubblicazione bando prequalifica | milestone | 0d | 2012-03-23 | 2012-03-23 |  |
| 3 | 1.2 | 3.02 Termine ricezione domande di partecipazione |  | 45d | 2012-03-24 | 2012-05-09 | 2 |
| 4 | 1.3 | 3.03 Valutazione delle domande di partecipazione |  | 15d | 2012-05-10 | 2012-05-24 | 3 |
| 5 | 2 | **4. Fase 2** |  | 142d | 2012-05-30 | 2012-10-20 |  |
| 6 | 2.1 | 4.01 Invio lettere di presentazione offerta a prequalificati | milestone | 0d | 2012-05-30 | 2012-05-30 | 4FS+5d |
| 7 | 2.2 | 4.02 Termine ricezione delle offerte |  | 80d | 2012-05-31 | 2012-08-20 | 6 |
| 8 | 2.3 | 4.03 Seduta pubblica I (busta A) | milestone | 0d | 2012-08-24 | 2012-08-24 | 7FS+3d |
| 9 | 2.4 | 4.04 Invio richiesta comprova art. 48 | milestone | 0d | 2012-08-26 | 2012-08-26 | 8FS+1d |
| 10 | 2.5 | 4.05 Termine ricezione documentazione art. 48 |  | 10d | 2012-08-27 | 2012-09-05 | 9 |
| 11 | 2.6 | 4.06 Valutazione della documentazione |  | 10d | 2012-09-06 | 2012-09-15 | 10 |
| 12 | 2.7 | 4.07 Seduta pubblica II (apertura busta B) | milestone | 0d | 2012-09-17 | 2012-09-17 | 11FS+1d |
| 13 | 2.8 | 4.08 Valutazione della CG |  | 15d | 2012-09-18 | 2012-10-02 | 12 |
| 14 | 2.9 | 4.09 Seduta pubblica III (apertura busta C ed agg. provv.) | milestone | 0d | 2012-10-04 | 2012-10-04 | 13FS+1d |
| 15 | 2.10 | 4.10 Aggiudicazione definitiva | milestone | 0d | 2012-10-20 | 2012-10-20 | 14FS+15d |
| 16 | 3 | **4b. Fase 4** |  | 184d | 2012-06-03 | 2012-12-05 |  |
| 17 | 3.1 | 10.01 Pubblicazine bando | milestone | 0d | 2012-06-03 | 2012-06-03 |  |
| 18 | 3.2 | 10.02 Termini per presentazione offerte |  | 45d | 2012-06-04 | 2012-07-18 | 17 |
| 19 | 3.3 | 10.03 Seduta pubblica I (busta A) | milestone | 0d | 2012-07-24 | 2012-07-24 | 18FS+5d |
| 20 | 3.4 | 10.04 Invio richiesta comprova art. 48 | milestone | 0d | 2012-07-26 | 2012-07-26 | 19FS+1d |
| 21 | 3.5 | 10.05 Termine ricezione documentazione art. 48 |  | 10d | 2012-07-27 | 2012-08-05 | 20 |
| 22 | 3.6 | 10.06 Valutazione della documentazione |  | 10d | 2012-08-06 | 2012-08-16 | 21 |
| 23 | 3.7 | 10.07 Seduta pubblica II (apertura busta B) | milestone | 0d | 2012-08-18 | 2012-08-18 | 22FS+1d |
| 24 | 3.8 | 10.08 Valutazione della CG |  | 15d | 2012-08-20 | 2012-09-03 | 23FS+1d |
| 25 | 3.9 | 10.09 Seduta pubblica III (apertura busta C ed agg. provv.) | milestone | 0d | 2012-09-05 | 2012-09-05 | 24FS+1d |
| 26 | 3.10 | 10.10 Aggiudicazione definitiva | milestone | 0d | 2012-09-11 | 2012-09-11 | 25FS+5d |
| 27 | 3.11 | 10.11 Stand - still period |  | 30d | 2012-09-12 | 2012-10-11 | 26 |
| 28 | 3.12 | 10.12 Stipula contratto | milestone | 0d | 2012-10-17 | 2012-10-17 | 27FS+5d |
| 29 | 3.13 | 10.13 Esecuzione verifica |  | 30d | 2012-10-21 | 2012-11-20 | 15 |
| 30 | 3.14 | 10.14 Validazione PD da parte del RUP |  | 15d | 2012-11-21 | 2012-12-05 | 29 |

| ID | WBS | Task | Type | Duration | Start | Finish | Predecessors |
| --- | --- | --- | --- | --- | --- | --- | --- |
| 31 | 4 | **5. Fase 5** |  | 96d | 2012-12-06 | 2013-03-16 |  |
| 32 | 4.1 | 5.01 Invio richiesta a progettista di inviare n.X copie del PD | milestone | 0d | 2012-12-06 | 2012-12-06 | 30 |
| 33 | 4.2 | 5.02 Invio richiesta a progettista di inviare asseverazione | milestone | 0d | 2012-12-07 | 2012-12-07 | 32 |
| 34 | 4.3 | 5.03 Produzione n.X copie PP e asseverazione |  | 10d | 2012-12-09 | 2012-12-18 | 33 |
| 35 | 4.4 | 5.04 Invio a Sportello Unico di istanza attivazione Comm.LL.PP con copie progetti | milestone | 0d | 2012-12-20 | 2012-12-20 | 34FS+1d |
| 36 | 4.5 | 5.05 Trasmissione docs per commissione LL.PP a Enti | milestone | 0d | 2012-12-28 | 2012-12-28 | 35FS+5d |
| 37 | 4.6 | 5.06 Istruttoria regionale |  | 30d | 2012-12-29 | 2013-01-29 | 36 |
| 38 | 4.7 | 5.07 Convocazione Commissione LL.PP |  | 30d | 2013-01-30 | 2013-02-28 | 37 |
| 39 | 4.8 | 5.08 Svolgimento Commissione LL.PP | milestone | 0d | 2013-03-04 | 2013-03-04 | 38FS+3d |
| 40 | 4.9 | 5.09 Comunicazione verbali a Sportello Unico | milestone | 0d | 2013-03-10 | 2013-03-10 | 39FS+5d |
| 41 | 4.10 | 5.10 Invio deliberazione ad Insiel | milestone | 0d | 2013-03-16 | 2013-03-16 | 40FS+5d |
| 42 | 5 | **6. Fase 6** |  | 45d | 2013-03-22 | 2013-05-07 |  |
| 43 | 5.1 | 6.01 Ordine di servizio a affidatario per adeguamento PD | milestone | 0d | 2013-03-22 | 2013-03-22 | 41FS+5d |
| 44 | 5.2 | 6.02 Adeguamento del PD |  | 30d | 2013-03-23 | 2013-04-21 | 43 |
| 45 | 5.3 | 6.03 Invio a Regione del progetto adeguato | milestone | 0d | 2013-04-23 | 2013-04-23 | 44FS+1d |
| 46 | 5.4 | 6.04 Emissione del Decreto di approvazione del PD adeguato |  | 10d | 2013-04-24 | 2013-05-05 | 45 |
| 47 | 5.5 | 6.05 Invio ad Insiel del Decreto di approvazione del PD adeguato | milestone | 0d | 2013-05-07 | 2013-05-07 | 46FS+1d |
| 48 | 6 | **7. Fase 7** |  | 181d | 2013-05-13 | 2013-11-12 |  |
| 49 | 6.1 | 7.01 Stipula del contratto | milestone | 0d | 2013-05-13 | 2013-05-13 | 47FS+5d |
| 50 | 6.2 | 7.02 Esecuzione PE e lavori |  | 180d | 2013-05-14 | 2013-11-12 | 49 |
| 51 | 7 | **8. Fase 8** |  | 136d | 2012-12-16 | 2013-05-06 |  |
| 52 | 7.1 | 8.01 Pubblicazine bando | milestone | 0d | 2012-12-16 | 2012-12-16 |  |
| 53 | 7.2 | 8.02 Termini per presentazione offerte |  | 45d | 2012-12-17 | 2013-02-03 | 52 |
| 54 | 7.3 | 8.03 Seduta pubblica I (busta A) | milestone | 0d | 2013-02-09 | 2013-02-09 | 53FS+5d |
| 55 | 7.4 | 8.04 Invio richiesta comprova art. 48 | milestone | 0d | 2013-02-11 | 2013-02-11 | 54FS+1d |
| 56 | 7.5 | 8.05 Termine ricezione documentazione art. 48 |  | 10d | 2013-02-12 | 2013-02-21 | 55 |
| 57 | 7.6 | 8.06 Valutazione della documentazione |  | 10d | 2013-02-22 | 2013-03-03 | 56 |
| 58 | 7.7 | 8.07 Seduta pubblica II (apertura busta B) | milestone | 0d | 2013-03-05 | 2013-03-05 | 57FS+1d |
| 59 | 7.8 | 8.08 Valutazione della CG |  | 15d | 2013-03-07 | 2013-03-21 | 58FS+1d |
| 60 | 7.9 | 8.09 Seduta pubblica III (apertura busta C ed agg. provv.) | milestone | 0d | 2013-03-23 | 2013-03-23 | 59FS+1d |
| 61 | 7.10 | 8.10 Aggiudicazione definitiva | milestone | 0d | 2013-03-29 | 2013-03-29 | 60FS+5d |
| 62 | 7.11 | 8.11 Stand - still period |  | 30d | 2013-03-30 | 2013-04-29 | 61 |
| 63 | 7.12 | 8.12 Stipula contratto | milestone | 0d | 2013-05-06 | 2013-05-06 | 62FS+5d |

| ID | WBS | Task | Type | Duration | Start | Finish | Predecessors |
| --- | --- | --- | --- | --- | --- | --- | --- |
| 64 | 8 | **9. Fase 9** |  | 121d | 2013-01-07 | 2013-05-09 |  |
| 65 | 8.1 | 9.01 Pubblicazine bando | milestone | 0d | 2013-01-07 | 2013-01-07 |  |
| 66 | 8.2 | 9.02 Termini per presentazione offerte |  | 30d | 2013-01-08 | 2013-02-06 | 65 |
| 67 | 8.3 | 9.03 Seduta pubblica I (busta A) | milestone | 0d | 2013-02-12 | 2013-02-12 | 66FS+5d |
| 68 | 8.4 | 9.04 Invio richiesta comprova art. 48 | milestone | 0d | 2013-02-14 | 2013-02-14 | 67FS+1d |
| 69 | 8.5 | 9.05 Termine ricezione documentazione art. 48 |  | 10d | 2013-02-15 | 2013-02-24 | 68 |
| 70 | 8.6 | 9.06 Valutazione della documentazione |  | 10d | 2013-02-25 | 2013-03-06 | 69 |
| 71 | 8.7 | 9.07 Seduta pubblica II (apertura busta B) | milestone | 0d | 2013-03-08 | 2013-03-08 | 70FS+1d |
| 72 | 8.8 | 9.08 Valutazione della CG |  | 15d | 2013-03-10 | 2013-03-24 | 71FS+1d |
| 73 | 8.9 | 9.09 Seduta pubblica III (apertura busta C ed agg. provv.) | milestone | 0d | 2013-03-26 | 2013-03-26 | 72FS+1d |
| 74 | 8.10 | 9.10 Aggiudicazione definitiva | milestone | 0d | 2013-04-01 | 2013-04-01 | 73FS+5d |
| 75 | 8.11 | 9.11 Stand - still period |  | 30d | 2013-04-02 | 2013-05-03 | 74 |
| 76 | 8.12 | 9.12 Stipula contratto | milestone | 0d | 2013-05-09 | 2013-05-09 | 75FS+5d |
