# McGraw-Hill Tool Consolidation

Schedule from GanttProject, 2013-10-28 to 2016-01-18.
Holidays every year on 01-01, 07-04, 11-11, 11-12, 12-25

## Calendars

- Project calendar: Mon-Fri working; Sat-Sun off. Exceptions (off unless hours are given): 2013-11-28, 2014-01-20, 2014-02-17, 2014-05-26, 2014-09-01, 2014-10-13, 2014-11-27, 2015-01-19, 2015-02-16, 2015-05-25, 2015-09-07, 2015-10-12, 2015-11-26, 2016-01-18.

## Resources

| Resource |
| --- |
| Doug |
| Murali |
| Bhushan |
| Bengen |
| Rob |

## Schedule

| ID | WBS | Task | Type | Duration | Start | Finish | Predecessors | Resources |
| --- | --- | --- | --- | --- | --- | --- | --- | --- |
| 1 | 1 | **Preliminary Tasks** |  | 8d | 2013-10-28 | 2013-11-06 |  |  |
| 2 | 1.1 | **Server Design** |  | 7d | 2013-10-28 | 2013-11-05 |  |  |
| 3 | 1.1.1 | Conduct Design Workshop Sessions |  | 2d | 2013-10-28 | 2013-10-29 |  | Doug |
| 4 | 1.1.2 | Determine failover and performance requirements |  | 1d | 2013-10-30 | 2013-10-30 | 3 | Doug |
| 5 | 1.1.3 | Review requirements |  | 1d | 2013-10-31 | 2013-10-31 | 4 | Doug; Rob |
| 6 | 1.1.4 | Select JIRA version |  | 1d | 2013-11-01 | 2013-11-01 | 5 | Doug |
| 7 | 1.1.5 | Create Atlassian architecure spec |  | 1d | 2013-11-04 | 2013-11-04 | 6 | Doug |
| 8 | 1.1.6 | Create Atlassian capacity plan |  | 1d | 2013-11-05 | 2013-11-05 | 7 | Doug |
| 9 | 1.2 | **Server Setup** |  | 8d | 2013-10-28 | 2013-11-06 |  |  |
| 10 | 1.2.1 | Select Database and OS |  | 1d | 2013-10-28 | 2013-10-28 |  | Rob |
| 11 | 1.2.2 | Acquire licenses |  | 1d | 2013-10-28 | 2013-10-28 |  | Rob |
| 12 | 1.2.3 | Setup vpn logins |  | 1d | 2013-10-28 | 2013-10-28 |  | Rob |
| 13 | 1.2.4 | Create DNS and SSL certs for JIRA, Confluence, Git |  | 1d | 2013-10-28 | 2013-10-28 |  | Rob |
| 14 | 1.2.5 | **Plan with infrastructure services for servers to be installed** |  | 1d | 2013-11-06 | 2013-11-06 | 8 |  |
| 15 | 1.2.5.1 | Create new virtual test servers |  | 1d | 2013-11-06 | 2013-11-06 |  | Rob |
| 16 | 1.2.5.2 | Create new virtual production servers |  | 1d | 2013-11-06 | 2013-11-06 |  | Rob |
| 17 | 2 | **Install Atlassian apps and SEG JIRA** |  | 14d | 2013-11-21 | 2013-12-11 | 1 |  |
| 18 | 2.1 | Install and configure JIRA |  | 1d | 2013-11-21 | 2013-11-21 |  |  |
| 19 | 2.2 | Install Crowd |  | 1d | 2013-11-22 | 2013-11-22 | 18 |  |
| 20 | 2.3 | Check LDAP lookup |  | 1d | 2013-11-25 | 2013-11-25 | 19 |  |
| 21 | 2.4 | Import copy of SEG production data and attachments |  | 1d | 2013-11-26 | 2013-11-26 | 20 |  |
| 22 | 2.5 | Install plug-ins |  | 1d | 2013-11-27 | 2013-11-27 | 21 |  |
| 23 | 2.6 | Follow-up and customization |  | 1d | 2013-11-29 | 2013-11-29 | 22 |  |
| 24 | 2.7 | Customize emails and install icons |  | 1d | 2013-12-02 | 2013-12-02 | 23 |  |
| 25 | 2.8 | Other development tasks |  | 1d | 2013-12-03 | 2013-12-03 | 24 |  |
| 26 | 2.9 | SEG JIRA ready | milestone | 0d | 2013-12-04 | 2013-12-04 | 25 |  |
| 27 | 2.10 | Install Confluence |  | 1d | 2013-12-04 | 2013-12-04 | 26 |  |
| 28 | 2.11 | Import copy of MHE production data and attachments |  | 1d | 2013-12-05 | 2013-12-05 | 27 |  |
| 29 | 2.12 | Install plug-ins |  | 1d | 2013-12-06 | 2013-12-06 | 28 |  |
| 30 | 2.13 | Follow-up and customizations |  | 1d | 2013-12-09 | 2013-12-09 | 29 |  |
| 31 | 2.14 | Install images |  | 1d | 2013-12-10 | 2013-12-10 | 30 |  |
| 32 | 2.15 | Other development tasks |  | 1d | 2013-12-11 | 2013-12-11 | 31 |  |
| 33 | 2.16 | MHE Confluence ready | milestone | 0d | 2013-12-12 | 2013-12-12 | 32 |  |

| ID | WBS | Task | Duration | Start | Finish | Predecessors |
| --- | --- | --- | --- | --- | --- | --- |
| 34 | 3 | **Pilot Setup** | 546d | 2013-11-07 | 2016-01-15 | 1 |
| 35 | 3.1 | **Install Test Server Apps** | 2d | 2013-11-07 | 2013-11-08 | 1 |
| 36 | 3.1.1 | Install JIRA and Crowd on test server | 1d | 2013-11-07 | 2013-11-07 | 1 |
| 37 | 3.1.2 | Install Confluence on test server | 1d | 2013-11-08 | 2013-11-08 | 36 |
| 38 | 3.2 | **Analysis and Design** | 0d | 2016-01-18 | 2016-01-18 |  |
| 39 | 3.2.1 | QC Design Workshops | 7d | 2013-11-07 | 2013-11-19 |  |
| 40 | 3.2.2 | VersionOne Design Workshops | 7d | 2013-11-07 | 2013-11-19 |  |
| 41 | 3.3 | **VersionOne Pilot Migration** | 15d | 2013-12-03 | 2013-12-23 | 35, 40 |
| 42 | 3.3.1 | Customize JIRA with workflows, etc | 2d | 2013-12-03 | 2013-12-04 |  |
| 43 | 3.3.2 | Test workflows | 1d | 2013-12-05 | 2013-12-05 | 42 |
| 44 | 3.3.3 | Follow-up and customization | 1d | 2013-12-06 | 2013-12-06 | 43 |
| 45 | 3.3.4 | Import VersionOne Projects | 3d | 2013-12-09 | 2013-12-11 | 44 |
| 46 | 3.3.5 | Import VersionOne attachments | 1d | 2013-12-12 | 2013-12-12 | 45 |
| 47 | 3.3.6 | Execute VersionOne special migration scripts | 2d | 2013-12-13 | 2013-12-16 | 46 |
| 48 | 3.3.7 | Validate imported data | 5d | 2013-12-17 | 2013-12-23 | 47 |
| 49 | 3.4 | **SEG QC Pilot Migration** | 17d | 2013-12-03 | 2013-12-26 | 35, 39 |
| 50 | 3.4.1 | Validate imported data | 5d | 2013-12-03 | 2013-12-09 |  |
| 51 | 3.4.2 | Import QC Projects | 3d | 2013-12-10 | 2013-12-12 | 50 |
| 52 | 3.4.3 | Customize JIRA with workflows, etc | 2d | 2013-12-13 | 2013-12-16 | 51 |
| 53 | 3.4.4 | Follow-up and customization | 1d | 2013-12-17 | 2013-12-17 | 52 |
| 54 | 3.4.5 | Test workflows | 1d | 2013-12-18 | 2013-12-18 | 53 |
| 55 | 3.4.6 | Import QC attachments | 1d | 2013-12-19 | 2013-12-19 | 54 |
| 56 | 3.4.7 | Execute QC special migration scripts | 2d | 2013-12-24 | 2013-12-26 | 41, 55 |
| 57 | 3.5 | **Pilot Acceptance** | 14d | 2013-12-27 | 2014-01-16 | 49 |
| 58 | 3.5.1 | Train pilot team | 1d | 2013-12-27 | 2013-12-27 |  |
| 59 | 3.5.2 | Pilot team evaluation | 10d | 2013-12-30 | 2014-01-13 | 58 |
| 60 | 3.5.3 | JIRA/Migration updates | 3d | 2014-01-14 | 2014-01-16 | 59 |

| ID | WBS | Task | Type | Duration | Start | Finish | Predecessors |
| --- | --- | --- | --- | --- | --- | --- | --- |
| 61 | 3.6 | **Final Migration (all projects)** |  | 6d | 2014-01-17 | 2014-01-27 | 57 |
| 62 | 3.6.1 | Migrate all VersionOne projects to prod |  | 2d | 2014-01-17 | 2014-01-21 |  |
| 63 | 3.6.2 | Validate VersionOne data |  | 1d | 2014-01-22 | 2014-01-22 | 62 |
| 64 | 3.6.3 | Migrate all QC projects to prod |  | 2d | 2014-01-21 | 2014-01-22 |  |
| 65 | 3.6.4 | Validate QC data |  | 1d | 2014-01-23 | 2014-01-23 | 64 |
| 66 | 3.6.5 | Setup HA Server |  | 2d | 2014-01-23 | 2014-01-24 |  |
| 67 | 3.6.6 | Test HA Server |  | 1d | 2014-01-27 | 2014-01-27 | 66 |
| 68 | 3.6.7 | Notify users and external partners | milestone | 0d | 2014-01-28 | 2014-01-28 | 67 |
| 69 | 4 | **MHE JIRA Migration** |  | 10d | 2013-12-12 | 2013-12-26 | 17 |
| 70 | 4.1 | Install temp JIRA |  | 1d | 2013-12-12 | 2013-12-12 |  |
| 71 | 4.2 | Migrate MHE data |  | 2d | 2013-12-13 | 2013-12-16 | 70 |
| 72 | 4.3 | Upgrade JIRA to prod version |  | 1d | 2013-12-17 | 2013-12-17 | 71 |
| 73 | 4.4 | Migrate MHE projects to JIRA |  | 5d | 2013-12-18 | 2013-12-24 | 72 |
| 74 | 4.5 | Validate imported data |  | 1d | 2013-12-26 | 2013-12-26 | 73 |
| 75 | 4.6 | MHE JIRA live in prod | milestone | 0d | 2013-12-27 | 2013-12-27 | 74 |
| 76 | 5 | **SEG Confluence Migration** |  | 20d | 2013-12-27 | 2014-01-27 | 69 |
| 77 | 5.1 | **Develop plugins** |  | 10d | 2013-12-27 | 2014-01-10 |  |
| 78 | 5.1.1 | Clickable image map |  | 4d | 2013-12-27 | 2014-01-02 |  |
| 79 | 5.1.2 | Sharepoint template replacement plugin to create JIRA issues |  | 4d | 2014-01-03 | 2014-01-08 | 78 |
| 80 | 5.1.3 | Import document approval plugin and workflow |  | 2d | 2014-01-09 | 2014-01-10 | 79 |
| 81 | 5.2 | **Migrate Data** |  | 10d | 2014-01-13 | 2014-01-27 |  |
| 82 | 5.2.1 | Install temp Confluence |  | 1d | 2014-01-13 | 2014-01-13 | 80 |
| 83 | 5.2.2 | Migrate SEG data |  | 2d | 2014-01-14 | 2014-01-15 | 82 |
| 84 | 5.2.3 | Upgrade Confluence to prod version |  | 1d | 2014-01-16 | 2014-01-16 | 83 |
| 85 | 5.2.4 | Migrate SEG projects to Confluence |  | 5d | 2014-01-17 | 2014-01-24 | 84 |
| 86 | 5.2.5 | Validate imported data |  | 1d | 2014-01-27 | 2014-01-27 | 85 |
| 87 | 5.2.6 | SEG Confluence live in prod | milestone | 0d | 2014-01-28 | 2014-01-28 | 86 |
